# MobiTown_Schedule_Detail_21122009

Schedule from MS Project, 2010-04-01 to 2010-05-31, A marks actual dates.
vtm

## Calendars

- Standard: Mon-Fri 08:00-12:00, 13:00-17:00; Sat-Sun off.

## Resources

| Resource |
| --- |
| HienBT |
| Team VN |
| PhuongNTH |
| ThangNVC |
| PhucBD |
| NhinNC |
| TrungPM |
| All |
| ThucNT |
| VTMMobile |
| HuyMQ |
| coder1 |
| coder2 |
| coder3 |
| coder4 |

## Schedule

| ID | WBS | Task | Duration | Start | Finish | Predecessors | Complete | Remaining | Total slack | Free slack | Constraint | Resources | Work | Actual work |
| --- | --- | --- | --- | --- | --- | --- | --- | --- | --- | --- | --- | --- | --- | --- |
| 1 | 1 | **Quick Quick - ERP** | 43d? | 2010-04-01 A | 2010-05-31 |  | 15% | 36.47d? | 0d |  |  |  | 1128h | 156.8h |
| 2 | 1.1 | **Khảo sát yêu cầu - Phân tích** | 11d? | 2010-04-01 A | 2010-04-15 |  | 73% | 3d? | 25d |  |  |  | 132h | 96h |
| 3 | 1.1.1 | Thu thập thông tin, tổng hợp nhu cầu quản lý | 6d? | 2010-04-01 A | 2010-04-08 A |  | 100% |  |  |  | start no earlier than 2010-04-01 | HuyMQ; TrungPM [50%] | 72h | 72h |
| 4 | 1.1.2 | Định hình yêu cầu - Xây dựng giải pháp | 5d? | 2010-04-09 A | 2010-04-15 | 3 | 40% | 3d? | 25d | 0d | start no earlier than 2010-04-09 | HuyMQ; TrungPM [50%] | 60h | 24h |
| 5 | 1.2 | **Thiết kế tài liệu hệ thống** | 6d? | 2010-04-16 | 2010-04-23 | 4 |  |  | 25d |  |  |  | 48h |  |
| 6 | 1.2.1 | Review chức năng, giải pháp hệ thống | 2d? | 2010-04-16 | 2010-04-19 |  |  |  | 25d | 0d | start no earlier than 2010-04-16 | HuyMQ | 16h |  |
| 7 | 1.2.2 | Thiết kế mô hình database | 4d? | 2010-04-20 | 2010-04-23 | 6 |  |  | 25d |  | start no earlier than 2010-04-20 | HuyMQ | 32h |  |
| 8 | 1.3 | **Xây dựng khung phát triễn phần mềm** | 17d? | 2010-04-01 A | 2010-04-23 |  | 77% | 3.9d? | 26d |  |  |  | 92h | 60.8h |
| 9 | 1.3.1 | Thiết kế cấu trúc hướng đối tượng (customize Zend, Extjs framework) | 11d? | 2010-04-01 A | 2010-04-15 A |  | 100% |  |  |  | finish no earlier than 2010-04-15 | TrungPM [50%] | 44h | 44h |
| 10 | 1.3.2 | Xây dựng module phân quyền người dùng | 3d | 2010-04-16 A | 2010-04-20 | 9 | 40% | 1.8d | 25.9d | 0d | start no earlier than 2010-04-16 | TrungPM | 24h | 9.6h |
| 11 | 1.3.3 | Xây dựng module hỗ trợ đa ngôn ngữ | 3d? | 2010-04-21 A | 2010-04-23 | 10 | 30% | 2.1d? | 25d |  | start no earlier than 2010-04-21 | TrungPM | 24h | 7.2h |
| 12 | 1.4 | **Phát triễn phần mềm** | 20d? | 2010-04-26 | 2010-05-21 |  |  |  | 5d |  |  |  | 640h |  |
| 13 | 1.4.1 | **Xây dựng module Bán hàng (Sale)** | 20d? | 2010-04-26 | 2010-05-21 |  |  |  | 5d |  |  |  | 160h |  |
| 14 | 1.4.1.1 | {Kế hoạch chi tiết module} | 20d? | 2010-04-26 | 2010-05-21 |  |  |  | 5d |  | finish no earlier than 2010-05-21 | coder1 | 160h |  |
| 15 | 1.4.2 | **Xây dựng module Mua hàng (Purchase)** | 20d? | 2010-04-26 | 2010-05-21 |  |  |  | 5d |  |  |  | 160h |  |
| 16 | 1.4.2.1 | {Kế hoạch chi tiết module} | 20d? | 2010-04-26 | 2010-05-21 |  |  |  | 5d |  | finish no earlier than 2010-05-21 | coder2 | 160h |  |
| 17 | 1.4.3 | **Xây dựng module Kho (Inventory)** | 20d? | 2010-04-26 | 2010-05-21 |  |  |  | 5d |  |  |  | 160h |  |
| 18 | 1.4.3.1 | {Kế hoạch chi tiết module} | 20d? | 2010-04-26 | 2010-05-21 |  |  |  | 5d |  | finish no earlier than 2010-05-21 | coder3 | 160h |  |
| 19 | 1.4.4 | **Xây dựng module Kế toán (Accountant)** | 20d? | 2010-04-26 | 2010-05-21 |  |  |  | 5d |  |  |  | 160h |  |
| 20 | 1.4.4.1 | {Kế hoạch chi tiết module} | 20d? | 2010-04-26 | 2010-05-21 |  |  |  | 5d |  | finish no earlier than 2010-05-21 | coder4 | 160h |  |
| 21 | 1.5 | Test tổng hợp | 20d? | 2010-04-26 | 2010-05-21 |  |  |  | 1d | 0d | finish no earlier than 2010-05-21 | HuyMQ | 160h |  |
| 22 | 1.6 | Release | 2d | 2010-05-24 | 2010-05-25 | 21 |  |  | 1d |  | finish no earlier than 2010-05-25 | HuyMQ; TrungPM | 32h |  |
| 23 | 1.7 | Thời gian dự trữ | 3d | 2010-05-27 | 2010-05-31 | 22 |  |  | 0d |  | finish no earlier than 2010-05-31 | All | 24h |  |
